# Northern Spur Test Pipeline

Schedule from Primavera P6, 2026-01-12 to 2026-07-31, data date 2026-01-05.

## Resources

| Resource | Group | Unit |
| --- | --- | --- |
| Right of way survey | material | km |
| Manhours | labor |  |
| Cleared and graded ROW | material | km |
| Excavator hours | equipment |  |
| Concrete | material | m3 |
| Reinforcement steel | material | tonne |
| Pipe strung | material | km |
| Weld joints | material | joints |
| Backfill | material | m3 |
| Hydrotest sections | material | nos |
| Instrument loop checks | material | nos |

## Schedule

| ID | WBS | Activity | Type | Duration | Start | Finish | Predecessors | Total float | Resources | Discipline |
| --- | --- | --- | --- | --- | --- | --- | --- | --- | --- | --- |
|  | S1 | **Civil & ROW Preparation** |  |  | 2026-01-12 | 2026-03-14 |  |  |  |  |
| A0100 |  | Statutory approvals and clearances |  | 42d | 2026-01-12 | 2026-02-28 |  | 3d |  | Safety |
|  | ROW | **Right of Way** |  |  | 2026-01-12 | 2026-03-14 |  |  |  |  |
| A1000 |  | Survey and stake right of way |  | 18d | 2026-01-12 | 2026-01-31 |  | 0d | Right of way survey [24 km]; Manhours [800 h] | Civil Works |
| A1010 |  | Clear and grade right of way |  | 36d | 2026-02-02 | 2026-03-14 | A1000 | 0d | Cleared and graded ROW [24 km]; Excavator hours [1200 h]; Manhours [3000 h] | Civil Works |
|  | FND | **Foundations** |  |  | 2026-02-16 | 2026-03-07 |  |  |  |  |
| A1020 |  | Pour pump station foundations |  | 18d | 2026-02-16 | 2026-03-07 | A1000 SS+5d | 12d | Concrete [480 m3]; Reinforcement steel [36 tonne]; Manhours [2400 h] | CIVIL |
|  | S2 | **Pipeline Construction** |  |  | 2026-03-16 | 2026-06-06 |  |  |  |  |
|  | ML1 | **Mainline Section 1** |  |  | 2026-03-16 | 2026-06-06 |  |  |  |  |
| A2000 |  | Pipe stringing |  | 24d | 2026-03-16 | 2026-04-11 | A1010 | 0d | Pipe strung [24 km]; Manhours [2600 h] | Piping Works |
| A2010 |  | Welding mainline |  | 42d | 2026-03-30 | 2026-05-16 | A2000 SS+10d | 0d | Weld joints [2000 joints]; Manhours [9000 h] | Piping Works |
| A2030 |  | Lower-in and backfill |  | 30d | 2026-05-04 | 2026-06-06 | A2010 FF | 0d | Backfill [14000 m3]; Manhours [5200 h] | Civil Works |
|  | S3 | **Commissioning** |  |  | 2026-06-08 | 2026-07-31 |  |  |  |  |
| A3000 |  | Hydrostatic test section 1 |  | 6d | 2026-06-08 | 2026-06-13 | A2030 | 0d | Hydrotest sections [2 nos]; Manhours [300 h] | Process |
| A3010 |  | Instrument loop checks |  | 18d | 2026-06-08 | 2026-06-27 | A2030 | 4d | Instrument loop checks [64 nos]; Manhours [900 h] | Instrumentation |
| A3001 |  | Hydrostatic test section 2 |  | 6d | 2026-06-15 | 2026-06-20 | A3000 | 0d | Hydrotest sections [2 nos]; Manhours [300 h] | Process |
| A3020 |  | Electrical energisation |  | 6d | 2026-06-22 | 2026-06-27 | A3010 SS+3d | 4d |  | Electrical |
| A3030 |  | Commissioning complete | milestone | 0d | 2026-07-31 | 2026-07-31 | A3001, A3020 | 0d |  | Process |
