# Northern Spur Test Pipeline

Schedule from Primavera P6, 2026-01-12 to 2026-07-31, data date 2026-01-05.

## Resources

| Resource | Group | Unit |
| --- | --- | --- |
| Right of way survey | material | km |
| Manhours | labor |  |
| Cleared and graded ROW | material | km |
| Excavator hours | equipment |  |
| Concrete | material | m3 |
| Reinforcement steel | material | tonne |
| Pipe strung | material | km |
| Weld joints | material | joints |
| Hydrotest sections | material | nos |
| Instrument loop checks | material | nos |

## Schedule

| ID | WBS | Activity | Type | Duration | Start | Finish | Predecessors | Total float | Resources | Discipline |
| --- | --- | --- | --- | --- | --- | --- | --- | --- | --- | --- |
|  | S1 | **Civil & ROW Preparation** |  |  | 2026-01-12 | 2026-03-14 |  |  |  |  |
| A0100 |  | Statutory approvals and clearances |  | 42d | 2026-01-12 | 2026-02-28 |  | 3d |  | Safety |
|  | ROW | **Right of Way** |  |  | 2026-01-19 | 2026-03-14 |  |  |  |  |
| A1000 |  | Survey and stake right of way |  | 18d | 2026-01-19 | 2026-02-07 |  | 0d | Right of way survey [24 km]; Manhours [800 h] | Civil Works |
| CG-1010 |  | Clear and grade right of way |  | 36d | 2026-02-02 | 2026-03-14 | A1000 | 0d | Cleared and graded ROW [24 km]; Excavator hours [1200 h]; Manhours [3000 h] | Civil Works |
|  | FND | **Foundations** |  |  | 2026-02-16 | 2026-03-07 |  |  |  |  |
| A1020 |  | Pour pump station foundations |  | 18d | 2026-02-16 | 2026-03-07 | A1000 SS+5d | 12d | Concrete [600 m3]; Reinforcement steel [36 tonne]; Manhours [2400 h] | CIVIL |
|  | S2 | **Pipeline Construction** |  |  | 2026-03-16 | 2026-05-16 |  |  |  |  |
|  | ML1 | **Mainline Section 1** |  |  | 2026-03-16 | 2026-05-16 |  |  |  |  |
| A2000-1 |  | Pipe stringing - section 1 |  | 12d | 2026-03-16 | 2026-03-28 | CG-1010 | 0d | Pipe strung [12 km]; Manhours [1300 h] | Piping Works |
| A2000-2 |  | Pipe stringing - section 2 |  | 12d | 2026-03-30 | 2026-04-11 | A2000-1 | 0d | Pipe strung [12 km]; Manhours [1300 h] | Piping Works |
| A2010 |  | Welding mainline |  | 42d | 2026-03-30 | 2026-05-16 | A2000-1 SS+10d | 0d | Weld joints [2000 joints]; Manhours [9000 h] | Piping Works |
|  | S3 | **Commissioning** |  |  | 2026-06-08 | 2026-07-31 |  |  |  |  |
| A3000M |  | Hydrostatic test sections 1 and 2 |  | 12d | 2026-06-08 | 2026-06-20 | A2010 | 0d | Hydrotest sections [4 nos]; Manhours [600 h] | Process |
| A3010 |  | Instrument loop checks |  | 18d | 2026-06-08 | 2026-06-27 | A2010 | 4d | Instrument loop checks [64 nos]; Manhours [900 h] | Instrumentation |
| A3020 |  | Electrical energisation |  | 6d | 2026-06-22 | 2026-06-27 | A3010 SS+3d | 4d |  | Electrical |
| A4000 |  | Cathodic protection installation |  | 24d | 2026-06-22 | 2026-07-18 | A3020 SS | 6d | Manhours [700 h] | Electrical |
| A3030 |  | Commissioning complete | milestone | 0d | 2026-07-31 | 2026-07-31 | A3000M, A3020 | 0d |  | Process |
