# Northern Spur Test Pipeline

Schedule from MS Project XML, 2026-01-12 to 2026-07-31, status date 2026-01-05.

## Resources

| Resource | Group | Unit |
| --- | --- | --- |
| ROW_SURVEY_KM |  | km |
| CLEARED_ROW_KM |  | km |
| EXCAVATOR_HOURS | Equipment |  |
| MANHOURS | Labor |  |
| CONCRETE_M3 |  | m3 |
| STEEL_TONNES |  | tonne |
| PIPE_STRUNG_KM |  | km |
| WELD_JOINTS |  | joints |
| TEST_SECTIONS |  | nos |
| LOOP_CHECKS |  | nos |

## Schedule

| ID | WBS | Task | Type | Duration | Start | Finish | Predecessors | Total slack | Resources | Discipline | Activity ID |
| --- | --- | --- | --- | --- | --- | --- | --- | --- | --- | --- | --- |
| 1 | 1 | **Civil & ROW Preparation** |  |  |  |  |  |  |  |  |  |
| 2 | 1.1 | Statutory approvals and clearances |  | 0d | 2026-01-12 | 2026-02-28 |  | 3d |  | Safety | A0100 |
| 3 | 1.2 | **Right of Way** |  |  |  |  |  |  |  |  |  |
| 4 | 1.2.1 | Survey and stake right of way |  | 0d | 2026-01-19 | 2026-02-07 |  | 0d | ROW_SURVEY_KM [24 km]; MANHOURS | Civil Works | A1000 |
| 5 | 1.2.2 | Clear and grade right of way |  | 0d | 2026-02-02 | 2026-03-14 | 4 | 0d | CLEARED_ROW_KM [24 km]; EXCAVATOR_HOURS; MANHOURS | Civil Works | CG-1010 |
| 6 | 1.3 | **Foundations** |  |  |  |  |  |  |  |  |  |
| 7 | 1.3.1 | Pour pump station foundations |  | 0d | 2026-02-16 | 2026-03-07 | 4SS+5d | 12d | CONCRETE_M3 [600 m3]; STEEL_TONNES [36 tonne]; MANHOURS | CIVIL | A1020 |
| 8 | 2 | **Pipeline Construction** |  |  |  |  |  |  |  |  |  |
| 9 | 2.1 | **Mainline Section 1** |  |  |  |  |  |  |  |  |  |
| 10 | 2.1.1 | Pipe stringing - section 1 |  | 0d | 2026-03-16 | 2026-03-28 | 5 | 0d | PIPE_STRUNG_KM [12 km]; MANHOURS | Piping Works | A2000-1 |
| 11 | 2.1.2 | Pipe stringing - section 2 |  | 0d | 2026-03-30 | 2026-04-11 | 10 | 0d | PIPE_STRUNG_KM [12 km]; MANHOURS | Piping Works | A2000-2 |
| 12 | 2.1.3 | Welding mainline |  | 0d | 2026-03-30 | 2026-05-16 | 10SS+10d | 0d | WELD_JOINTS [2000 joints]; MANHOURS | Piping Works | A2010 |
| 13 | 3 | **Commissioning** |  |  |  |  |  |  |  |  |  |
| 14 | 3.1 | Hydrostatic test sections 1 and 2 |  | 0d | 2026-06-08 | 2026-06-20 | 12 | 0d | TEST_SECTIONS [4 nos]; MANHOURS | Process | A3000M |
| 15 | 3.2 | Instrument loop checks |  | 0d | 2026-06-08 | 2026-06-27 | 12 | 4d | LOOP_CHECKS [64 nos]; MANHOURS | Instrumentation | A3010 |
| 16 | 3.3 | Electrical energisation |  | 0d | 2026-06-22 | 2026-06-27 | 15SS+3d | 4d |  | Electrical | A3020 |
| 17 | 3.4 | Cathodic protection installation |  | 0d | 2026-06-22 | 2026-07-18 | 16SS | 6d | MANHOURS | Electrical | A4000 |
| 18 | 3.5 | Commissioning complete | milestone | 0d | 2026-07-31 | 2026-07-31 | 14, 16 | 0d |  | Process | A3030 |
